# Construction schedule v1.0

Schedule from an IFC model, 2027-06-07 to 2027-09-01.
House extension

## Schedule

| ID | Activity | Type | Duration | Start | Finish | Predecessors | Planned start | Planned finish | Total float | Free float |
| --- | --- | --- | --- | --- | --- | --- | --- | --- | --- | --- |
| 1 | **Preparation** |  | 4d | 2027-06-07 | 2027-06-10 |  | 2027-06-07 | 2027-06-11 | 3d | 0d |
| 1.1 | Start of construction | milestone | 0d | 2027-06-07 | 2027-06-07 |  |  |  | 3d | 0d |
| 1.2 | Set up site |  | 2d | 2027-06-07 | 2027-06-08 | 1.1 |  |  | 3d | 0d |
| 1.3 | Clear garden and paving |  | 1d | 2027-06-09 | 2027-06-09 | 1.2 | 2027-06-07 | 2027-06-07 | 3d | 0d |
| 1.4 | Set out the extension |  | 1d | 2027-06-10 | 2027-06-10 | 1.3 | 2027-06-07 | 2027-06-07 | 3d | 0d |
| 2 | **Foundations** |  | 12d | 2027-06-11 | 2027-06-28 |  | 2027-06-07 | 2027-06-11 | 3d | 0d |
| 2.1 | Excavate foundation trench |  | 2d | 2027-06-11 | 2027-06-14 | 1.4 | 2027-06-07 | 2027-06-08 | 3d | 0d |
| 2.2 | Foundation formwork and reinforcement |  | 3d | 2027-06-15 | 2027-06-17 | 2.1 | 2027-06-07 | 2027-06-09 | 3d | 0d |
| 2.3 | Reinforcement inspection | milestone | 0d | 2027-06-17 | 2027-06-17 | 2.2 | 2027-06-07 | 2027-06-07 | 3d | 0d |
| 2.4 | Pour foundation |  | 6h | 2027-06-18 | 2027-06-18 | 2.3 | 2027-06-07 | 2027-06-07 | 3.25d | 0d |
| 2.5 | Foundation brickwork |  | 2d | 2027-06-24 | 2027-06-25 | 2.4 FS+3d | 2027-06-07 | 2027-06-08 | 3d | 0d |
| 2.6 | Lay hollow-core floor |  | 5h | 2027-06-28 | 2027-06-28 | 2.5 | 2027-06-07 | 2027-06-07 | 3.38d | 0d |
| 3 | **Shell** |  | 15d | 2027-06-29 | 2027-07-19 |  | 2027-06-07 | 2027-06-11 | 0d |  |
| 3.1 | Build inner cavity leaf |  | 5d | 2027-06-29 | 2027-07-05 | 2.6 | 2027-06-07 | 2027-06-11 | 3d | 0d |
| 3.2 | Build outer cavity leaf |  | 6d | 2027-06-29 | 2027-07-06 | 2.6 | 2027-06-07 | 2027-06-14 | 5d |  |
| 3.3 | Place roof elements |  | 6h | 2027-07-06 | 2027-07-06 | 3.1 | 2027-06-07 | 2027-06-07 | 3.25d | 0d |
| 3.4 | Apply roofing |  | 2d | 2027-07-07 | 2027-07-08 | 3.3 | 2027-06-07 | 2027-06-08 | 3d |  |
| 3.5 | Install window frames |  | 2d | 2027-07-14 | 2027-07-15 | 3.4, 3.2 | 2027-06-07 | 2027-06-08 | 0d |  |
| 3.6 | Break through rear wall |  | 2d | 2027-07-16 | 2027-07-19 | 3.5 | 2027-06-07 | 2027-06-08 | 0d |  |
| 4 | **Finishing** |  | 17d | 2027-07-20 | 2027-09-01 |  | 2027-06-07 | 2027-06-11 | 0d |  |
| 4.1 | Install building services |  | 3d | 2027-07-20 | 2027-07-22 | 3.6 | 2027-06-07 | 2027-06-09 | 0d |  |
| 4.2 | Plastering |  | 4d | 2027-07-23 | 2027-07-28 | 4.1 | 2027-06-07 | 2027-06-10 | 0d |  |
| 4.3 | Lay floor screed |  | 1d | 2027-07-29 | 2027-07-29 | 4.2 | 2027-06-07 | 2027-06-07 | 0d |  |
| 4.4 | Tiling |  | 3d | 2027-08-27 | 2027-08-31 | 4.3 FS+5d | 2027-06-07 | 2027-06-09 | 0d |  |
| 4.5 | Painting |  | 3d | 2027-07-29 | 2027-08-23 | 4.2 | 2027-06-07 | 2027-06-09 | 6d |  |
| 4.6 | Snagging and cleaning |  | 1d | 2027-09-01 | 2027-09-01 | 4.4, 4.5 | 2027-06-07 | 2027-06-07 | 0d |  |
| 4.7 | Handover | milestone | 0d | 2027-09-01 | 2027-09-01 | 4.6 | 2027-06-07 | 2027-06-07 | 0d |  |
