# Construction schedule v1.0

Schedule from an IFC model, 2027-06-07 to 2027-08-30, A marks actual dates.
Aanbouw woning

## Schedule

| ID | Activity | Type | Duration | Start | Finish | Predecessors | Complete | Planned start | Planned finish | Total float | Free float | Resources |
| --- | --- | --- | --- | --- | --- | --- | --- | --- | --- | --- | --- | --- |
| 1 | **Voorbereiding** |  | 4d | 2027-06-07 | 2027-06-10 |  |  | 2027-06-07 | 2027-06-11 | 0d |  |  |
| 1.1 | Start bouw | milestone | 0d | 2027-06-07 A | 2027-06-07 A |  | 100% |  |  | 0d |  |  |
| 1.2 | Bouwplaats inrichten |  | 2d | 2027-06-07 A | 2027-06-08 A | 1.1 | 100% |  |  | 0d |  |  |
| 1.3 | Tuin en bestrating verwijderen |  | 1d | 2027-06-09 A | 2027-06-09 A | 1.2 | 100% | 2027-06-07 | 2027-06-07 | 0d |  |  |
| 1.4 | Aanbouw uitzetten |  | 1d | 2027-06-10 A | 2027-06-10 A | 1.3 | 100% | 2027-06-07 | 2027-06-07 | 0d |  |  |
| 2 | **Fundering** |  | 12d | 2027-06-11 | 2027-06-28 |  |  | 2027-06-07 | 2027-06-11 | 0d |  |  |
| 2.1 | Funderingssleuf ontgraven |  | 2d | 2027-06-11 A | 2027-06-15 A | 1.4 | 100% | 2027-06-07 | 2027-06-08 | 0d |  |  |
| 2.2 | Wapening en bekisting fundering |  | 3d | 2027-06-15 | 2027-06-17 | 2.1 |  | 2027-06-07 | 2027-06-09 | 0d |  | Timmerploeg |
| 2.3 | Inspectie wapening | milestone | 0d | 2027-06-17 | 2027-06-17 | 2.2 |  | 2027-06-07 | 2027-06-07 | 0d |  |  |
| 2.4 | Fundering storten |  | 6h | 2027-06-18 | 2027-06-18 | 2.3 |  | 2027-06-07 | 2027-06-07 | 0.25d | 0d | Beton |
| 2.5 | Funderingsmetselwerk |  | 2d | 2027-06-24 | 2027-06-25 | 2.4 FS+3d |  | 2027-06-07 | 2027-06-08 | 0d |  | Metselaar |
| 2.6 | Kanaalplaatvloer leggen |  | 5h | 2027-06-28 | 2027-06-28 | 2.5 |  | 2027-06-07 | 2027-06-07 | 0.38d | 0d | Timmerploeg; Mobiele kraan |
| 3 | **Ruwbouw** |  | 15d | 2027-06-29 | 2027-07-19 |  |  | 2027-06-07 | 2027-06-11 | 0d |  |  |
| 3.1 | Binnenspouwblad metselen |  | 5d | 2027-06-29 | 2027-07-05 | 2.6 |  | 2027-06-07 | 2027-06-11 | 3d | 0d | Metselaar |
| 3.2 | Buitenspouwblad metselen |  | 6d | 2027-07-06 | 2027-07-13 | 2.6 |  | 2027-06-07 | 2027-06-14 | 0d |  | Metselaar |
| 3.3 | Dakelementen plaatsen |  | 6h | 2027-07-06 | 2027-07-06 | 3.1 |  | 2027-06-07 | 2027-06-07 | 3.25d | 0d | Timmerploeg; Mobiele kraan |
| 3.4 | Dakbedekking aanbrengen |  | 2d | 2027-07-07 | 2027-07-08 | 3.3 |  | 2027-06-07 | 2027-06-08 | 3d |  |  |
| 3.5 | Kozijnen plaatsen |  | 2d | 2027-07-14 | 2027-07-15 | 3.4, 3.2 |  | 2027-06-07 | 2027-06-08 | 0d |  | Timmerploeg |
| 3.6 | Achtergevel doorbreken |  | 2d | 2027-07-16 | 2027-07-19 | 3.5 |  | 2027-06-07 | 2027-06-08 | 0d |  | Metselaar |
| 4 | **Afbouw** |  | 15d | 2027-07-20 | 2027-08-30 |  |  | 2027-06-07 | 2027-06-11 | 0d |  |  |
| 4.1 | Installaties aanleggen |  | 3d | 2027-07-20 | 2027-07-22 | 3.6 |  | 2027-06-07 | 2027-06-09 | 0d |  |  |
| 4.2 | Stucwerk |  | 2d | 2027-07-23 | 2027-07-26 | 4.1 |  | 2027-06-07 | 2027-06-10 | 0d |  | Stukadoor |
| 4.3 | Dekvloer aanbrengen |  | 1d | 2027-07-27 | 2027-07-27 | 4.2 |  | 2027-06-07 | 2027-06-07 | 0d |  |  |
| 4.4 | Tegelwerk |  | 3d | 2027-08-25 | 2027-08-27 | 4.3 FS+5d |  | 2027-06-07 | 2027-06-09 | 0d |  |  |
| 4.5 | Schilderwerk |  | 3d | 2027-07-27 | 2027-07-29 | 4.2 |  | 2027-06-07 | 2027-06-09 | 6d |  |  |
| 4.6 | Opleverpunten en schoonmaken |  | 1d | 2027-08-30 | 2027-08-30 | 4.4, 4.5 |  | 2027-06-07 | 2027-06-07 | 0d |  |  |
| 4.7 | Oplevering | milestone | 0d | 2027-08-30 | 2027-08-30 | 4.6 |  | 2027-06-07 | 2027-06-07 | 0d |  |  |
